Schedule from MS Project, 2008-09-01 to 2009-01-26, costs in ₽.

## Calendars

- Стандартный: Mon-Thu 09:00-13:00, 14:00-18:15; Fri 09:00-13:00, 14:00-17:00; Sat-Sun off. Exceptions (off unless hours are given): 2009-01-01.

## Resources

| Resource | Rate | Notes |
| --- | --- | --- |
| Руководитель проекта | 200 | Осуществляет руководство всеми этапами проекта |
| Аналитик | 130 |  |
| Специалист по испытаниям | 100 |  |
| Старший программист | 150 |  |
| Программист-аналитик | 90 |  |
| Программист | 100 |  |
| Специалист по документации | 80 |  |
| Младший программист | 50 |  |
| Представитель заказчика |  |  |

## Schedule

| ID | WBS | Task | Duration | Start | Finish | Predecessors | Total slack | Resources | Work | Cost |
| --- | --- | --- | --- | --- | --- | --- | --- | --- | --- | --- |
| 1 | 1 | **Разработка ПО** | 105d | 2008-09-01 | 2009-01-26 |  | 0d |  | 2048h | 169,400 |
| 2 | 1.1 | **Постановка задачи** | 12d | 2008-09-01 | 2008-09-16 |  | 0d |  | 172h | 22,480 |
| 3 | 1.1.1 | **Определение требований к ПО** | 6d | 2008-09-01 | 2008-09-08 |  | 0d |  | 60h | 9,200 |
| 4 | 1.1.1.1 | Определение функциональных требований | 6d | 2008-09-01 | 2008-09-08 |  | 0d | Руководитель проекта [50%]; Аналитик [50%] | 36h | 5,520 |
| 5 | 1.1.1.2 | Определение эксплуатационных требований | 4d | 2008-09-02 | 2008-09-08 | 4FF | 0d | Руководитель проекта [50%]; Аналитик [50%] | 24h | 3,680 |
| 6 | 1.1.2 | Предпроектные исследования | 5d | 2008-09-08 | 2008-09-15 | 5 | 0d | Аналитик; Программист-аналитик | 80h | 8,800 |
| 7 | 1.1.3 | Разработка и утверждение технического | 2d | 2008-09-15 | 2008-09-16 | 6SS+4d | 0d | Руководитель проекта; Специалист по документации | 32h | 4,480 |
| 8 | 1.2 | **Анализ требований и определение спецификации** | 8.94d | 2008-09-16 | 2008-09-29 |  | 0d |  | 96h | 11,600 |
| 9 | 1.2.1 | Анализ требований технического задания | 3.94d | 2008-09-16 | 2008-09-29 | 7 | 84.06d | Руководитель проекта [50%]; Аналитик | 24h | 3,680 |
| 10 | 1.2.2 | Выбор математического аппарата формализации | 3d | 2008-09-16 | 2008-09-19 | 7 | 0d | Аналитик; Программист-аналитик [50%] | 36h | 4,200 |
| 11 | 1.2.3 | Разработка модели предметной области | 4d | 2008-09-22 | 2008-09-25 | 10 | 0d | Аналитик [25%]; Программист-аналитик [50%] | 24h | 2,480 |
| 12 | 1.2.4 | Согласование и утверждение эскизного проекта | 2d | 2008-09-23 | 2008-09-25 | 11FF | 0d | Аналитик [25%]; Программист-аналитик [50%] | 12h | 1,240 |
| 13 | 1.3 | **Проектирование** | 17d | 2008-09-25 | 2008-10-20 |  | 0d | Младший программист | 340h | 31,520 |
| 14 | 1.3.1 | Проектирование общей структуры ПО | 5d | 2008-09-25 | 2008-10-02 | 12 | 0d | Старший программист [50%]; Программист [50%] | 40h | 5,000 |
| 15 | 1.3.2 | Декомпозиция компонентов и построение структурных иерархий | 6.94d | 2008-10-02 | 2008-10-20 | 14 | 69.06d | Старший программист; Программист [50%] | 60h | 8,000 |
| 16 | 1.3.3 | Проектирование компонентов | 7d | 2008-10-07 | 2008-10-16 | 14FS+3d | 0d | Программист | 56h | 5,600 |
| 17 | 1.3.4 | Согласование и утверждение технического проекта | 3d | 2008-10-15 | 2008-10-20 | 16SS+6d | 0d | Руководитель проекта [50%]; Старший программист [50%]; Специалист по документации | 48h | 6,120 |
| 18 | 1.4 | **Реализация** | 62d | 2008-10-20 | 2009-01-15 |  | 0d | Представитель заказчика | 1320h | 89,800 |
| 19 | 1.4.1 | Разработка программы | 30d | 2008-10-20 | 2008-12-01 | 17 | 0d | Программист; Старший программист [50%] | 360h | 42,000 |
| 20 | 1.4.2 | Разработка программной документации | 10d | 2008-12-01 | 2008-12-15 | 19FF | 0d | Программист; Специалист по документации [50%] | 120h | 11,200 |
| 21 | 1.4.3 | **Испытание программы** | 22d | 2008-12-15 | 2009-01-15 |  | 0d |  | 264h | 26,400 |
| 22 | 1.4.3.1 | Разработка методики тестирования | 2d | 2008-12-15 | 2008-12-17 | 20 | 0d | Специалист по испытаниям; Программист [50%] | 24h | 2,400 |
| 23 | 1.4.3.2 | Тестирование модулей | 15d | 2008-12-17 | 2009-01-15 | 22 | 7d | Специалист по испытаниям; Программист [50%] | 120h | 12,000 |
| 24 | 1.4.3.3 | Тестирование интеграции | 10d | 2008-12-24 | 2009-01-08 | 22FS+5d | 0d | Специалист по испытаниям; Программист [50%] | 120h | 12,000 |
| 25 | 1.4.4 | Согласование и утверждение рабочего проекта | 5d | 2009-01-07 | 2009-01-14 | 24FS-1d | 0d | Руководитель проекта [50%]; Старший программист [50%]; Специалист по документации | 80h | 10,200 |

| ID | WBS | Task | Type | Duration | Start | Finish | Predecessors | Total slack | Resources | Work | Cost |
| --- | --- | --- | --- | --- | --- | --- | --- | --- | --- | --- | --- |
| 26 | 1.5 | **Внедрение** |  | 8d | 2009-01-14 | 2009-01-26 |  | 0d |  | 120h | 14,000 |
| 27 | 1.5.1 | Подготовка и передача ПО и программной документации для сопровождения |  | 3d | 2009-01-14 | 2009-01-19 | 25 | 0d | Руководитель проекта [50%]; Программист [50%]; Специалист по документации | 48h | 5,520 |
| 28 | 1.5.2 | Оформление и утверждение акта о передаче программы |  | 2d | 2009-01-20 | 2009-01-21 | 27FF | 3d | Руководитель проекта; Специалист по документации | 32h | 4,480 |
| 29 | 1.5.3 | Обучение персонала |  | 5d | 2009-01-20 | 2009-01-26 | 27 | 0d | Программист | 40h | 4,000 |
| 30 | 1.6 | Завершение проекта | milestone | 0d | 2009-01-26 | 2009-01-26 | 29 | 0d |  |  |  |
